# AudioSynth

Schedule from GanttProject, 2012-10-24 to 2012-12-03.
Womprats

## Calendars

- Project calendar: Mon-Sun working.

## Resources

| Resource |
| --- |
| Jackson |
| Bradon |
| Kevin |
| Andy |

## Schedule

| ID | Task | Type | Duration | Start | Finish | Predecessors | Resources |
| --- | --- | --- | --- | --- | --- | --- | --- |
| 1 | Schematic Design Review |  | 4d | 2012-10-24 | 2012-10-27 |  | Andy |
| 2 | Layout and Fab audio amp circuit |  | 5d | 2012-10-29 | 2012-11-02 |  | Jackson; Bradon |
| 3 | Verify LCD Backlight Design |  | 1d | 2012-11-02 | 2012-11-02 |  | Kevin |
| 4 | Verify Audio Amp Design |  | 1d | 2012-11-03 | 2012-11-03 | 2 |  |
| 5 | Design LCD Daughterboard |  | 5d | 2012-11-03 | 2012-11-07 | 3 | Kevin [33%] |
| 6 | Write EEPROM Driver |  | 14d | 2012-11-03 | 2012-11-16 | 1, 2 | Andy [66%] |
| 7 | Write UI Driver |  | 14d | 2012-11-03 | 2012-11-16 | 1, 2, 3 | Kevin [67%] |
| 8 | Write Synth Core |  | 14d | 2012-11-03 | 2012-11-16 | 1 | Jackson [67%]; Bradon [67%] |
| 9 | Make Footprints |  | 2d | 2012-11-04 | 2012-11-05 | 1, 3, 4 | Jackson [33%]; Bradon [33%]; Andy [34%] |
| 10 | Layout Board |  | 2d | 2012-11-06 | 2012-11-07 | 1, 3, 4, 9 | Jackson [33%]; Bradon [33%]; Andy [34%] |
| 11 | Verify Layout |  | 6d | 2012-11-08 | 2012-11-13 | 10 | Andy [34%] |
| 12 | CAM Files Sent to Sunstone | milestone | 0d | 2012-11-14 | 2012-11-14 | 11 | Bradon [33%] |
| 13 | Receive Boards |  | 7d | 2012-11-15 | 2012-11-21 | 12 |  |
| 14 | Code Integration |  | 5d | 2012-11-17 | 2012-11-21 | 6, 7, 8 |  |
| 15 | Verify PSU Works |  | 1d | 2012-11-22 | 2012-11-22 | 13 | Jackson |
| 16 | Verify CPU Works |  | 1d | 2012-11-22 | 2012-11-22 | 13 |  |
| 17 | Verify Audio Amp Works |  | 5d | 2012-11-23 | 2012-11-27 | 6, 8, 15, 16 |  |
| 18 | Verify LCD Works |  | 5d | 2012-11-23 | 2012-11-27 | 7, 15, 16 | Kevin |
| 19 | Verify EEPROM Works |  | 5d | 2012-11-23 | 2012-11-27 | 2, 6, 15, 16 | Andy |
| 20 | Verify Channels Work |  | 5d | 2012-11-23 | 2012-11-27 | 7, 8, 15, 16 | Bradon |
| 21 | Bring Up Board | milestone | 0d | 2012-11-28 | 2012-11-28 | 13, 15, 17, 18, 19, 20 |  |
| 22 | Software Written | milestone | 0d | 2012-11-29 | 2012-11-29 | 3, 4, 6, 7, 8, 21 | Jackson; Bradon; Andy |
| 23 | Build Enclosure |  | 3d | 2012-11-30 | 2012-12-02 | 1, 22 | Jackson; Bradon |
| 24 | Project Done | milestone | 0d | 2012-12-03 | 2012-12-03 | 21, 22, 23 | Jackson; Bradon; Kevin; Andy |
